# CaseStudy

How a schedule from MS Project changed from version to version. A marks actual dates.

## Version 1 (saved 2009-07-11, file CaseStudy-2.mpp)

| ID | WBS | Task | Duration | Start | Finish | Predecessors | Complete | Total float | Constraint |
| --- | --- | --- | --- | --- | --- | --- | --- | --- | --- |
| 1 | 1 | **WebPortal** | 39d? | 2009-07-01 A | 2009-08-25 |  | 6% | 0d |  |
| 2 | 1.1 | **Project Management** | 5.25d? | 2009-07-01 A | 2009-07-08 |  | 81% | 33.75d |  |
| 3 |  | Project Kickoff | 1d | 2009-07-01 A | 2009-07-02 A |  | 100% |  |  |
| 4 |  | Estimation Size/Efforts | 0.5d | 2009-07-02 A | 2009-07-02 A | 3 | 100% |  |  |
| 5 |  | Review Estimate | 0.25d | 2009-07-02 A | 2009-07-02 A | 4 | 100% |  |  |
| 6 |  | Develop Project Schedule | 0.5d | 2009-07-03 A | 2009-07-03 A | 5 | 100% |  |  |
| 7 |  | Develop Project Plan | 1d | 2009-07-03 A | 2009-07-06 A | 6 | 100% |  |  |
| 8 |  | Review Project Plan | 1d | 2009-07-06 A | 2009-07-07 A | 7 | 100% |  |  |
| 9 |  | Approv Project Plan | 1d? | 2009-07-07 | 2009-07-08 | 8 |  | 31.75d |  |
| 10 | 1.2 | **Monitor & Control** | 35d | 2009-07-01 | 2009-08-19 |  |  | 2d |  |
| 11 | 1.2.1 | **Weekly Review with Program Manager** | 10.25d | 2009-07-06 | 2009-07-20 |  |  | 23.75d |  |
| 12 |  | Weekly Review with Program Manager 1 | 2h | 2009-07-06 | 2009-07-06 |  |  | 33.75d | start no earlier than 2009-07-06 |
| 13 |  | Weekly Review with Program Manager 2 | 2h | 2009-07-13 | 2009-07-13 |  |  | 28.75d | start no earlier than 2009-07-13 |
| 14 |  | Weekly Review with Program Manager 3 | 2h | 2009-07-20 | 2009-07-20 |  |  | 23.75d | start no earlier than 2009-07-20 |
| 15 | 1.2.2 | **Biweeklyy Review with Customer** | 31d | 2009-07-07 | 2009-08-19 |  |  | 2d |  |
| 16 |  | Fortnightly Review with Customer 1 | 1d | 2009-07-07 | 2009-07-08 |  |  | 32d | start no earlier than 2009-07-07 |
| 17 |  | Fortnightly Review with Customer 2 | 1d | 2009-07-21 | 2009-07-22 |  |  | 22d | start no earlier than 2009-07-21 |
| 18 |  | Fortnightly Review with Customer 3 | 1d | 2009-08-04 | 2009-08-05 |  |  | 12d | start no earlier than 2009-08-04 |
| 19 |  | Fortnightly Review with Customer 4 | 1d | 2009-08-18 | 2009-08-19 |  |  | 2d | start no earlier than 2009-08-18 |
| 20 | 1.2.3 | **Monthly Process Quality Audit** | 26d | 2009-07-01 | 2009-08-06 |  |  | 11d |  |
| 21 |  | Monthly Process Quality Audit 1 | 1d | 2009-07-01 | 2009-07-02 |  |  | 36d | start no earlier than 2009-07-01 |
| 22 |  | Monthly Process Quality Audit 2 | 1d | 2009-08-05 | 2009-08-06 |  |  | 11d | start no earlier than 2009-08-05 |
| 23 | 1.3 | **Software Engineering** | 14d? | 2009-07-02 | 2009-07-22 |  |  | 0d |  |
| 24 |  | Develop SRS | 8d? | 2009-07-02 | 2009-07-14 | 3 |  | 0d |  |
| 25 |  | Review Requirement Document | 1d? | 2009-07-16 | 2009-07-17 | 24FS+2d |  | 24d |  |
| 26 |  | Requirements Freezed/Approved | 1d? | 2009-07-17 | 2009-07-20 | 25 |  | 24d |  |
| 27 |  | Develop Architecture | 4d? | 2009-07-10 | 2009-07-16 | 24FS-2d |  | 0d |  |
| 28 |  | Develop Design | 6d? | 2009-07-14 | 2009-07-22 | 27SS+2d |  | 0d |  |
| 29 |  | Approve Design & Architecture | 1d? | 2009-07-16 | 2009-07-17 | 27 |  | 25d |  |
| 30 | 1.4 | **Support Activity** | 19.5d? | 2009-07-01 | 2009-07-28 |  |  | 13d |  |
| 31 |  | Setup Development Environment | 1d? | 2009-07-01 | 2009-07-02 |  |  | 13d |  |
| 32 | 1.4.2 | **Regular Back & Archival** | 15.25d | 2009-07-03 | 2009-07-24 |  |  | 19.75d |  |
| 33 |  | Regular Back & Archival 1 | 2h | 2009-07-03 | 2009-07-03 |  |  | 34.75d | start no earlier than 2009-07-03 |
| 34 |  | Regular Back & Archival 2 | 2h | 2009-07-10 | 2009-07-10 |  |  | 29.75d | start no earlier than 2009-07-10 |
| 35 |  | Regular Back & Archival 3 | 2h | 2009-07-17 | 2009-07-17 |  |  | 24.75d | start no earlier than 2009-07-17 |
| 36 |  | Regular Back & Archival 4 | 2h | 2009-07-24 | 2009-07-24 |  |  | 19.75d | start no earlier than 2009-07-24 |
| 37 |  | Acqiuire Test Server | 1d? | 2009-07-27 | 2009-07-28 | 42FS-1d |  | 17.5d |  |
| 38 |  | Setup Testing Environment | 0.5d? | 2009-07-28 | 2009-07-28 | 37 |  | 17.5d |  |
| 39 | 1.5 | **Agile Iterations** | 25d? | 2009-07-21 | 2009-08-25 |  |  | 0d |  |
| 40 | 1.5.1 | **Development- Sprint1** | 12.5d? | 2009-07-21 | 2009-08-06 |  |  | 0d |  |
| 41 |  | Construction-1 | 4d? | 2009-07-21 | 2009-07-27 | 28FS-1d, 31 |  | 0d |  |
| 42 |  | Unit Testing-1 | 4d? | 2009-07-22 | 2009-07-28 | 41SS+1d |  | 0d |  |
| 43 |  | Develop a Build and Release-11 | 1d? | 2009-07-28 | 2009-07-29 | 42 |  | 0d |  |
| 44 |  | System Testing-1 | 2d? | 2009-07-29 | 2009-07-31 | 43 |  | 0d |  |
| 45 |  | Bug Fixing-1 | 2d? | 2009-07-29 | 2009-07-31 | 44SS+4h |  | 0d |  |
| 46 |  | Develop a Build and Release-12 | 1d? | 2009-07-31 | 2009-08-03 | 45 |  | 0d |  |
| 47 |  | System Testing-1 | 1d? | 2009-08-03 | 2009-08-04 | 46 |  | 0d |  |
| 48 |  | UAT-1 | 1d? | 2009-08-04 | 2009-08-05 | 47 |  | 0d |  |
| 49 |  | Module1 Complete | 1d? | 2009-08-05 | 2009-08-06 | 48 |  | 0d |  |
| 50 | 1.5.2 | **Development- Sprint2** | 12.5d? | 2009-08-06 | 2009-08-25 |  |  | 0d |  |
| 51 |  | Construction-2 | 4d? | 2009-08-06 | 2009-08-12 | 49, 48 |  | 0d |  |
| 52 |  | Unit Testing-2 | 4d? | 2009-08-07 | 2009-08-13 | 51SS+1d |  | 0d |  |
| 53 |  | Develop a Build and Release-21 | 1d? | 2009-08-13 | 2009-08-14 | 52 |  | 0d |  |
| 54 |  | System Testing-2 | 2d? | 2009-08-14 | 2009-08-18 | 53 |  | 0d |  |
| 55 |  | Bug Fixing-2 | 2d? | 2009-08-17 | 2009-08-19 | 54SS+4h |  | 0d |  |
| 56 |  | Develop a Build and Release-22 | 1d? | 2009-08-19 | 2009-08-20 | 55 |  | 0d |  |
| 57 |  | System Testing-2 | 1d? | 2009-08-20 | 2009-08-21 | 56 |  | 0d |  |
| 58 |  | UAT-2 | 1d? | 2009-08-21 | 2009-08-24 | 57 |  | 0d |  |
| 59 |  | Module 2 Complete | 1d? | 2009-08-24 | 2009-08-25 | 58 |  | 0d |  |

## Version 2 (saved 2009-07-11, file CPMEIProjects-Temp-Combined.mpt)

Last finish 2009-08-25 → 2009-08-19 (-6d). Complete tasks 6 → 0.

Removed: 9 Approv Project Plan; 26 Requirements Freezed/Approved; 29 Approve Design & Architecture; 39 Agile Iterations; 40 Development- Sprint1; 41 Construction-1; 42 Unit Testing-1; 43 Develop a Build and Release-11; 44 System Testing-1; 45 Bug Fixing-1; 46 Develop a Build and Release-12; 47 System Testing-1; 48 UAT-1; 49 Module1 Complete; 50 Development- Sprint2; 51 Construction-2; 52 Unit Testing-2; 53 Develop a Build and Release-21; 54 System Testing-2; 55 Bug Fixing-2; 56 Develop a Build and Release-22; 57 System Testing-2; 58 UAT-2; 59 Module 2 Complete

Changed:

| ID | Task | Start | Finish | Duration | Complete | Total float | Predecessors | Other |
| --- | --- | --- | --- | --- | --- | --- | --- | --- |
| 1 | **WebPortal** | 2009-07-01 A → 2009-07-01 10:00 | 2009-08-25 → 2009-08-19 10:00 (-6d) | 39d? → 35d? | 6% → 0% |  |  | baseline start 2009-07-01 → none; baseline finish 2009-08-21 → none |
| 2 | **Project Management** | 2009-07-01 A → 2009-07-01 10:00 | 2009-07-08 → 2009-07-07 12:00 (-1d) | 5.25d? → 4.25d | 81% → 0% | 33.75d → 20d |  | baseline start 2009-07-01 → none; baseline finish 2009-07-07 → none |
| 3 | Project Kickoff | 2009-07-01 A → 2009-07-01 10:00 | 2009-07-02 A → 2009-07-02 10:00 |  | 100% → 0% | none → 20d |  | baseline start 2009-07-01 → none; baseline finish 2009-07-02 → none |
| 4 | Estimation Size/Efforts | 2009-07-02 A → 2009-07-02 10:00 | 2009-07-02 A → 2009-07-02 15:00 |  | 100% → 0% | none → 30.75d |  | baseline start 2009-07-02 → none; baseline finish 2009-07-02 → none |
| 5 | Review Estimate | 2009-07-02 A → 2009-07-02 15:00 | 2009-07-02 A → 2009-07-02 17:00 |  | 100% → 0% | none → 30.75d |  | baseline start 2009-07-02 → none; baseline finish 2009-07-02 → none |
| 6 | Develop Project Schedule | 2009-07-03 A → 2009-07-03 08:00 | 2009-07-03 A → 2009-07-03 12:00 |  | 100% → 0% | none → 30.75d |  | baseline start 2009-07-03 → none; baseline finish 2009-07-03 → none |
| 7 | Develop Project Plan | 2009-07-03 A → 2009-07-03 13:00 | 2009-07-06 A → 2009-07-06 12:00 |  | 100% → 0% | none → 30.75d |  | baseline start 2009-07-03 → none; baseline finish 2009-07-06 → none |
| 8 | Review Project Plan | 2009-07-06 A → 2009-07-06 13:00 | 2009-07-07 A → 2009-07-07 12:00 |  | 100% → 0% | none → 30.75d |  | baseline start 2009-07-06 → none; baseline finish 2009-07-07 → none |
| 9 | **Monitor & Control** | 2009-07-01 → 2009-07-01 10:00 | 2009-08-19 → 2009-08-19 10:00 |  |  | 2d → 0d |  | baseline start 2009-07-01 → none; baseline finish 2009-08-19 → none |
| 10 | **Weekly Review with Program Manager** | 2009-07-06 → 2009-07-06 10:00 | 2009-07-20 → 2009-07-20 12:00 |  |  | 23.75d → 21.75d |  | baseline start 2009-07-06 → none; baseline finish 2009-07-20 → none |
| 11 | Weekly Review with Program Manager 1 | 2009-07-06 → 2009-07-06 10:00 | 2009-07-06 → 2009-07-06 12:00 |  |  | 33.75d → 31.75d |  | constraint start no earlier than 2009-07-06 → start no earlier than 2009-07-06 10:00; baseline start 2009-07-06 → none; baseline finish 2009-07-06 → none |
| 12 | Weekly Review with Program Manager 2 | 2009-07-13 → 2009-07-13 10:00 | 2009-07-13 → 2009-07-13 12:00 |  |  | 28.75d → 26.75d |  | constraint start no earlier than 2009-07-13 → start no earlier than 2009-07-13 10:00; baseline start 2009-07-13 → none; baseline finish 2009-07-13 → none |
| 13 | Weekly Review with Program Manager 3 | 2009-07-20 → 2009-07-20 10:00 | 2009-07-20 → 2009-07-20 12:00 |  |  | 23.75d → 21.75d |  | constraint start no earlier than 2009-07-20 → start no earlier than 2009-07-20 10:00; baseline start 2009-07-20 → none; baseline finish 2009-07-20 → none |
| 14 | **Biweeklyy Review with Customer** | 2009-07-07 → 2009-07-07 10:00 | 2009-08-19 → 2009-08-19 10:00 |  |  | 2d → 0d |  | baseline start 2009-07-07 → none; baseline finish 2009-08-19 → none |
| 15 | Fortnightly Review with Customer 1 | 2009-07-07 → 2009-07-07 10:00 | 2009-07-08 → 2009-07-08 10:00 |  |  | 32d → 30d |  | constraint start no earlier than 2009-07-07 → start no earlier than 2009-07-07 10:00; baseline start 2009-07-07 → none; baseline finish 2009-07-08 → none |
| 16 | Fortnightly Review with Customer 2 | 2009-07-21 → 2009-07-21 10:00 | 2009-07-22 → 2009-07-22 10:00 |  |  | 22d → 20d |  | constraint start no earlier than 2009-07-21 → start no earlier than 2009-07-21 10:00; baseline start 2009-07-21 → none; baseline finish 2009-07-22 → none |
| 17 | Fortnightly Review with Customer 3 | 2009-08-04 → 2009-08-04 10:00 | 2009-08-05 → 2009-08-05 10:00 |  |  | 12d → 10d |  | constraint start no earlier than 2009-08-04 → start no earlier than 2009-08-04 10:00; baseline start 2009-08-04 → none; baseline finish 2009-08-05 → none |
| 18 | Fortnightly Review with Customer 4 | 2009-08-18 → 2009-08-18 10:00 | 2009-08-19 → 2009-08-19 10:00 |  |  | 2d → 0d |  | constraint start no earlier than 2009-08-18 → start no earlier than 2009-08-18 10:00; baseline start 2009-08-18 → none; baseline finish 2009-08-19 → none |
| 19 | **Monthly Process Quality Audit** | 2009-07-01 → 2009-07-01 10:00 | 2009-08-06 → 2009-08-06 10:00 |  |  | 11d → 9d |  | baseline start 2009-07-01 → none; baseline finish 2009-08-06 → none |
| 20 | Monthly Process Quality Audit 1 | 2009-07-01 → 2009-07-01 10:00 | 2009-07-02 → 2009-07-02 10:00 |  |  | 36d → 34d |  | constraint start no earlier than 2009-07-01 → start no earlier than 2009-07-01 10:00; baseline start 2009-07-01 → none; baseline finish 2009-07-02 → none |
| 21 | Monthly Process Quality Audit 2 | 2009-08-05 → 2009-08-05 10:00 | 2009-08-06 → 2009-08-06 10:00 |  |  | 11d → 9d |  | constraint start no earlier than 2009-08-05 → start no earlier than 2009-08-05 10:00; baseline start 2009-08-05 → none; baseline finish 2009-08-06 → none |
| 22 | **Software Engineering** | 2009-07-02 → 2009-07-02 10:00 | 2009-07-22 → 2009-07-22 10:00 |  |  | 0d → 20d |  | baseline start 2009-07-02 → none; baseline finish 2009-07-22 → none |
| 23 | Develop SRS | 2009-07-02 → 2009-07-02 10:00 | 2009-07-14 → 2009-07-14 10:00 |  |  | 0d → 20d |  | baseline start 2009-07-02 → none; baseline finish 2009-07-14 → none |
| 24 | Review & Approve Requirements | 2009-07-16 → 2009-07-16 10:00 | 2009-07-17 → 2009-07-17 10:00 |  |  | 24d → 23d |  | was named Review Requirement Document; baseline start 2009-07-16 → none; baseline finish 2009-07-17 → none |
| 25 | Develop Architecture | 2009-07-10 → 2009-07-10 10:00 | 2009-07-16 → 2009-07-16 10:00 |  |  | 0d → 20d |  | baseline start 2009-07-10 → none; baseline finish 2009-07-16 → none |
| 26 | Develop Design | 2009-07-14 → 2009-07-14 10:00 | 2009-07-22 → 2009-07-22 10:00 |  |  | 0d → 20d |  | baseline start 2009-07-14 → none; baseline finish 2009-07-22 → none |
| 27 | **Support Activity** | 2009-07-01 → 2009-07-01 10:00 | 2009-07-28 → 2009-07-24 12:00 (-4d) | 19.5d? → 17.25d? |  | 13d → 17.75d |  | baseline start 2009-07-01 → none; baseline finish 2009-07-28 → none |
| 28 | Setup Development Environment | 2009-07-01 → 2009-07-01 10:00 | 2009-07-02 → 2009-07-02 10:00 |  |  | 13d → 34d |  | baseline start 2009-07-01 → none; baseline finish 2009-07-02 → none |
| 29 | **Regular Back & Archival** | 2009-07-03 → 2009-07-03 10:00 | 2009-07-24 → 2009-07-24 12:00 |  |  | 19.75d → 17.75d |  | baseline start 2009-07-03 → none; baseline finish 2009-07-24 → none |
| 30 | Regular Back & Archival 1 | 2009-07-03 → 2009-07-03 10:00 | 2009-07-03 → 2009-07-03 12:00 |  |  | 34.75d → 32.75d |  | constraint start no earlier than 2009-07-03 → start no earlier than 2009-07-03 10:00; baseline start 2009-07-03 → none; baseline finish 2009-07-03 → none |
| 31 | Regular Back & Archival 2 | 2009-07-10 → 2009-07-10 10:00 | 2009-07-10 → 2009-07-10 12:00 |  |  | 29.75d → 27.75d |  | constraint start no earlier than 2009-07-10 → start no earlier than 2009-07-10 10:00; baseline start 2009-07-10 → none; baseline finish 2009-07-10 → none |
| 32 | Regular Back & Archival 3 | 2009-07-17 → 2009-07-17 10:00 | 2009-07-17 → 2009-07-17 12:00 |  |  | 24.75d → 22.75d |  | constraint start no earlier than 2009-07-17 → start no earlier than 2009-07-17 10:00; baseline start 2009-07-17 → none; baseline finish 2009-07-17 → none |
| 33 | Regular Back & Archival 4 | 2009-07-24 → 2009-07-24 10:00 | 2009-07-24 → 2009-07-24 12:00 |  |  | 19.75d → 17.75d |  | constraint start no earlier than 2009-07-24 → start no earlier than 2009-07-24 10:00; baseline start 2009-07-24 → none; baseline finish 2009-07-24 → none |
| 34 | Acqiuire Test Server | 2009-07-27 → 2009-07-01 10:00 (-26d) | 2009-07-28 → 2009-07-02 10:00 (-26d) |  |  | 17.5d → 33.5d | Unit Testing-1FS-1d → none | baseline start 2009-07-27 → none; baseline finish 2009-07-28 → none |
| 35 | Setup Testing Environment | 2009-07-28 → 2009-07-02 10:00 (-26d) | 2009-07-28 → 2009-07-02 15:00 (-26d) |  |  | 17.5d → 33.5d |  | baseline start 2009-07-28 → none; baseline finish 2009-07-28 → none |
