# Software System Implementation

How a schedule from MS Project changed from version to version. A marks actual dates.

## Version 1 (saved 2006-09-26, file Example One.mpp)

| ID | WBS | Task | Duration | Start | Finish | Predecessors | Total float |
| --- | --- | --- | --- | --- | --- | --- | --- |
| 1 | 1 | **Build Project Plan** | 3.5d | 2006-09-26 | 2006-09-29 |  | 6.75d |
| 2 |  | Create Statement of Work | 4h | 2006-09-26 | 2006-09-26 |  | 6.75d |
| 3 |  | Obtain Approval of Statement of Work | 1d | 2006-09-26 | 2006-09-27 | 2 | 6.75d |
| 4 |  | Create Project Plan | 1d | 2006-09-27 | 2006-09-28 | 3 | 6.75d |
| 5 |  | Obtain Approval of Project Plan | 1d | 2006-09-28 | 2006-09-29 | 4 | 6.75d |
| 6 |  | Finalize project plan and definition | 0d | 2006-09-29 | 2006-09-29 | 5 | 6.75d |
| 7 | 2 | **Set Up System Environment** | 11.5d | 2006-09-29 | 2006-10-16 |  | 6.75d |
| 8 |  | Test/Verify all Programs | 5d | 2006-09-29 | 2006-10-06 | 6 | 6.75d |
| 9 |  | Run integrated processes on the Server | 3d | 2006-10-06 | 2006-10-11 | 8 | 6.75d |
| 10 |  | Install Printer Hardware | 2d | 2006-10-11 | 2006-10-13 | 9 | 6.75d |
| 11 |  | Request Test file from integrator | 4h | 2006-10-13 | 2006-10-13 | 10 | 6.75d |
| 12 |  | Test Printer Hardware with Test Files | 1d | 2006-10-16 | 2006-10-16 | 11 | 6.75d |
| 13 | 3 | **Review Work Completed / In Progress** | 14d | 2006-09-26 | 2006-10-13 |  | 7.75d |
| 14 |  | Verify Accuracy of Table Design and Entry | 2d | 2006-09-26 | 2006-09-27 |  | 7.75d |
| 15 |  | Identify all Table Data | 5d | 2006-09-28 | 2006-10-04 | 14 | 7.75d |
| 16 |  | Create and Enter all Table Data | 4d | 2006-10-05 | 2006-10-10 | 15 | 7.75d |
| 17 |  | Verify Accuracy of all Data | 2d | 2006-10-11 | 2006-10-12 | 16 | 7.75d |
| 18 |  | Identify Incomplete Table Data | 1d | 2006-10-13 | 2006-10-13 | 17 | 7.75d |
| 19 | 4 | **Determine Additional Requirements** | 21.75d | 2006-09-26 | 2006-10-25 |  | 0d |
| 20 |  | Finalize Additional session Scope | 1d | 2006-09-26 | 2006-09-26 |  | 0d |
| 21 |  | Communicate sessions to necessary attendees | 1d | 2006-09-27 | 2006-09-27 | 20 | 0d |
| 22 |  | Conduct Requirements Sessions | 1d | 2006-09-28 | 2006-09-28 | 21 | 0d |
| 23 |  | Document System Requirements | 15d | 2006-09-29 | 2006-10-19 | 22 | 0d |
| 24 |  | Circulate initial requirements draft | 15d | 2006-10-04 | 2006-10-25 | 23FS-7.5% | 0d |
| 25 |  | Document Minutes from Sessions | 0d | 2006-10-25 | 2006-10-25 | 24 | 0d |
| 26 | 5 | **Testing** | 4d? | 2006-09-26 | 2006-09-29 |  | 17.75d |
| 27 |  | Develop test plans | 4d | 2006-09-26 | 2006-09-29 |  | 17.75d |
| 28 |  | Develop integration test plan | 4d | 2006-09-26 | 2006-09-29 |  | 17.75d |
| 29 |  | Unit Testing | 1d? | 2006-09-26 | 2006-09-26 |  | 20.75d |
| 30 |  | Unit testing complete | 0d | 2006-09-26 | 2006-09-26 |  | 21.75d |
| 31 | 6 | **Rollout** | 3d | 2006-09-26 | 2006-09-28 |  | 18.75d |
| 32 |  | Develop rollout strategy | 1d | 2006-09-26 | 2006-09-26 |  | 18.75d |
| 33 |  | Develop rollout project plan methodology | 1d | 2006-09-27 | 2006-09-27 | 32 | 18.75d |
| 34 |  | Distribute software | 1d | 2006-09-28 | 2006-09-28 | 33 | 18.75d |
| 35 |  | Rollout complete | 0d | 2006-09-28 | 2006-09-28 | 34 | 18.75d |

## Version 2 (data date 2010-02-16, saved 2010-02-16, file Example Two - Copy.mpp)

Last finish 2006-10-25 → 2010-02-18 (+1212d). Complete tasks 0 → 18.

Changed:

| ID | Task | Start | Finish | Duration | Complete | Total float | Other |
| --- | --- | --- | --- | --- | --- | --- | --- |
| 1 | **Build Project Plan** | 2006-09-26 → 2010-01-20 A (+1212d) | 2006-09-29 → 2010-01-25 (+1214d) |  | 0% → 63% | 6.75d → 18.25d | baseline start none → 2006-09-26; baseline finish none → 2006-09-29 |
| 2 | Create Statement of Work | 2006-09-26 → 2010-01-20 A (+1212d) | 2006-09-26 → 2010-01-20 (+1212d) | 4h → 8h | 0% → 50% | 6.75d → 20.75d | baseline start none → 2006-09-26; baseline finish none → 2006-09-26 |
| 3 | Obtain Approval of Statement of Work | 2006-09-26 → 2010-01-20 A (+1212d) | 2006-09-27 → 2010-01-21 A (+1212d) |  | 0% → 100% | 6.75d → none | baseline start none → 2006-09-26; baseline finish none → 2006-09-27 |
| 4 | Create Project Plan | 2006-09-27 → 2010-01-21 A (+1212d) | 2006-09-28 → 2010-01-22 A (+1212d) |  | 0% → 100% | 6.75d → none | baseline start none → 2006-09-27; baseline finish none → 2006-09-28 |
| 5 | Obtain Approval of Project Plan | 2006-09-28 → 2010-01-22 (+1212d) | 2006-09-29 → 2010-01-25 (+1214d) |  |  |  | baseline start none → 2006-09-28; baseline finish none → 2006-09-29 |
| 6 | Finalize project plan and definition | 2006-09-29 → 2010-01-25 (+1214d) | 2006-09-29 → 2010-01-25 (+1214d) |  |  |  | baseline start none → 2006-09-29; baseline finish none → 2006-09-29 |
| 7 | **Set Up System Environment** | 2006-09-29 → 2010-01-25 (+1214d) | 2006-10-16 → 2010-02-09 (+1212d) |  |  |  | baseline start none → 2006-09-29; baseline finish none → 2006-10-16 |
| 8 | Test/Verify all Programs | 2006-09-29 → 2010-01-25 (+1214d) | 2006-10-06 → 2010-02-01 (+1214d) |  |  |  | baseline start none → 2006-09-29; baseline finish none → 2006-10-06 |
| 9 | Run integrated processes on the Server | 2006-10-06 → 2010-02-01 (+1214d) | 2006-10-11 → 2010-02-04 (+1212d) |  |  |  | baseline start none → 2006-10-06; baseline finish none → 2006-10-11 |
| 10 | Install Printer Hardware | 2006-10-11 → 2010-02-04 (+1212d) | 2006-10-13 → 2010-02-08 (+1214d) |  |  |  | baseline start none → 2006-10-11; baseline finish none → 2006-10-13 |
| 11 | Request Test file from integrator | 2006-10-13 → 2010-02-08 (+1214d) | 2006-10-13 → 2010-02-08 (+1214d) |  |  |  | baseline start none → 2006-10-13; baseline finish none → 2006-10-13 |
| 12 | Test Printer Hardware with Test Files | 2006-10-16 → 2010-02-09 (+1212d) | 2006-10-16 → 2010-02-09 (+1212d) |  |  |  | baseline start none → 2006-10-16; baseline finish none → 2006-10-16 |
| 13 | **Review Work Completed / In Progress** | 2006-09-26 → 2010-01-20 A (+1212d) | 2006-10-13 → 2010-02-08 (+1214d) |  | 0% → 79% |  | baseline start none → 2006-09-26; baseline finish none → 2006-10-13 |
| 14 | Verify Accuracy of Table Design and Entry | 2006-09-26 → 2010-01-20 A (+1212d) | 2006-09-27 → 2010-01-21 A (+1212d) |  | 0% → 100% | 7.75d → none | baseline start none → 2006-09-26; baseline finish none → 2006-09-27 |
| 15 | Identify all Table Data | 2006-09-28 → 2010-01-22 A (+1212d) | 2006-10-04 → 2010-01-28 A (+1212d) |  | 0% → 100% | 7.75d → none | baseline start none → 2006-09-28; baseline finish none → 2006-10-04 |
| 16 | Create and Enter all Table Data | 2006-10-05 → 2010-01-29 A (+1212d) | 2006-10-10 → 2010-02-03 A (+1212d) |  | 0% → 100% | 7.75d → none | baseline start none → 2006-10-05; baseline finish none → 2006-10-10 |
| 17 | Verify Accuracy of all Data | 2006-10-11 → 2010-02-04 (+1212d) | 2006-10-12 → 2010-02-05 (+1212d) |  |  |  | baseline start none → 2006-10-11; baseline finish none → 2006-10-12 |
| 18 | Identify Incomplete Table Data | 2006-10-13 → 2010-02-08 (+1214d) | 2006-10-13 → 2010-02-08 (+1214d) |  |  |  | baseline start none → 2006-10-13; baseline finish none → 2006-10-13 |
| 19 | **Determine Additional Requirements** | 2006-09-26 → 2010-01-20 A (+1212d) | 2006-10-25 → 2010-02-18 (+1212d) |  | 0% → 99% |  | baseline start none → 2006-09-26; baseline finish none → 2006-10-25 |
| 20 | Finalize Additional session Scope | 2006-09-26 → 2010-01-20 A (+1212d) | 2006-09-26 → 2010-01-20 A (+1212d) |  | 0% → 100% | 0d → none | baseline start none → 2006-09-26; baseline finish none → 2006-09-26 |
| 21 | Communicate sessions to necessary attendees | 2006-09-27 → 2010-01-21 A (+1212d) | 2006-09-27 → 2010-01-21 A (+1212d) |  | 0% → 100% | 0d → none | baseline start none → 2006-09-27; baseline finish none → 2006-09-27 |
| 22 | Conduct Requirements Sessions | 2006-09-28 → 2010-01-22 A (+1212d) | 2006-09-28 → 2010-01-22 A (+1212d) |  | 0% → 100% | 0d → none | baseline start none → 2006-09-28; baseline finish none → 2006-09-28 |
| 23 | Document System Requirements | 2006-09-29 → 2010-01-25 A (+1214d) | 2006-10-19 → 2010-02-12 A (+1212d) |  | 0% → 100% | 0d → none | baseline start none → 2006-09-29; baseline finish none → 2006-10-19 |
| 24 | Circulate initial requirements draft | 2006-10-04 → 2010-01-28 A (+1212d) | 2006-10-25 → 2010-02-18 A (+1212d) |  | 0% → 100% | 0d → none | baseline start none → 2006-10-04; baseline finish none → 2006-10-25 |
| 25 | Document Minutes from Sessions | 2006-10-25 → 2010-02-18 (+1212d) | 2006-10-25 → 2010-02-18 (+1212d) |  |  |  | baseline start none → 2006-10-25; baseline finish none → 2006-10-25 |
| 26 | **Testing** | 2006-09-26 → 2010-01-20 A (+1212d) | 2006-09-29 → 2010-01-25 A (+1214d) |  | 0% → 100% | 17.75d → none | baseline start none → 2006-09-26; baseline finish none → 2006-09-29 |
| 27 | Develop test plans | 2006-09-26 → 2010-01-20 A (+1212d) | 2006-09-29 → 2010-01-25 A (+1214d) |  | 0% → 100% | 17.75d → none | baseline start none → 2006-09-26; baseline finish none → 2006-09-29 |
| 28 | Develop integration test plan | 2006-09-26 → 2010-01-20 A (+1212d) | 2006-09-29 → 2010-01-25 A (+1214d) |  | 0% → 100% | 17.75d → none | baseline start none → 2006-09-26; baseline finish none → 2006-09-29 |
| 29 | Unit Testing | 2006-09-26 → 2010-01-20 A (+1212d) | 2006-09-26 → 2010-01-20 A (+1212d) |  | 0% → 100% | 20.75d → none | baseline start none → 2006-09-26; baseline finish none → 2006-09-26 |
| 30 | Unit testing complete | 2006-09-26 → 2010-01-20 A (+1212d) | 2006-09-26 → 2010-01-20 A (+1212d) |  | 0% → 100% | 21.75d → none | baseline start none → 2006-09-26; baseline finish none → 2006-09-26 |
| 31 | **Rollout** | 2006-09-26 → 2010-01-20 A (+1212d) | 2006-09-28 → 2010-01-22 A (+1212d) |  | 0% → 100% | 18.75d → none | baseline start none → 2006-09-26; baseline finish none → 2006-09-28 |
| 32 | Develop rollout strategy | 2006-09-26 → 2010-01-20 A (+1212d) | 2006-09-26 → 2010-01-20 A (+1212d) |  | 0% → 100% | 18.75d → none | baseline start none → 2006-09-26; baseline finish none → 2006-09-26 |
| 33 | Develop rollout project plan methodology | 2006-09-27 → 2010-01-21 A (+1212d) | 2006-09-27 → 2010-01-21 A (+1212d) |  | 0% → 100% | 18.75d → none | baseline start none → 2006-09-27; baseline finish none → 2006-09-27 |
| 34 | Distribute software | 2006-09-28 → 2010-01-22 A (+1212d) | 2006-09-28 → 2010-01-22 A (+1212d) |  | 0% → 100% | 18.75d → none | baseline start none → 2006-09-28; baseline finish none → 2006-09-28 |
| 35 | Rollout complete | 2006-09-28 → 2010-01-22 A (+1212d) | 2006-09-28 → 2010-01-22 A (+1212d) |  | 0% → 100% | 18.75d → none | baseline start none → 2006-09-28; baseline finish none → 2006-09-28 |

## Version 3 (data date 2010-02-16, saved 2010-02-16, file Example Two - Copy (2).mpp)

Last finish stays 2010-02-18. Complete tasks 18 → 20.

Changed:

| ID | Task | Start | Finish | Duration | Complete | Total float | Other |
| --- | --- | --- | --- | --- | --- | --- | --- |
| 1 | **Build Project Plan** |  | 2010-01-25 → 2010-02-16 A (+22d) | 3.5d → 20d | 63% → 100% | 18.25d → none | baseline start 2006-09-26 → 2010-01-20; baseline finish 2006-09-29 → 2010-01-25 |
| 2 | Create Statement of Work |  | 2010-01-20 A | 8h → 4h | 50% → 100% | 20.75d → none | baseline start 2006-09-26 → 2010-01-20; baseline finish 2006-09-26 → 2010-01-20 |
| 3 | Obtain Approval of Statement of Work |  |  |  |  |  | baseline start 2006-09-26 → 2010-01-20; baseline finish 2006-09-27 → 2010-01-21 |
| 4 | Create Project Plan |  | 2010-01-22 A → 2010-02-16 A (+25d) | 1d → 18.5d |  |  | baseline start 2006-09-27 → 2010-01-21; baseline finish 2006-09-28 → 2010-01-22 |
| 5 | Obtain Approval of Project Plan | 2010-01-22 A | 2010-01-25 A |  | 0% → 100% | 6.75d → none | baseline start 2006-09-28 → 2010-01-22; baseline finish 2006-09-29 → 2010-01-25 |
| 6 | Finalize project plan and definition | 2010-01-25 A | 2010-01-25 A | 0d → 0.5d | 0% → 100% | 6.75d → none | baseline start 2006-09-29 → 2010-01-25; baseline finish 2006-09-29 → 2010-01-25 |
| 7 | **Set Up System Environment** | 2010-01-25 A |  |  | 0% → 72% |  | baseline start 2006-09-29 → 2010-01-25; baseline finish 2006-10-16 → 2010-02-09 |
| 8 | Test/Verify all Programs | 2010-01-25 A | 2010-02-01 A |  | 0% → 100% | 6.75d → none | baseline start 2006-09-29 → 2010-01-25; baseline finish 2006-10-06 → 2010-02-01 |
| 9 | Run integrated processes on the Server | 2010-02-01 A |  |  | 0% → 75% | 6.75d → 7.75d | baseline start 2006-10-06 → 2010-02-01; baseline finish 2006-10-11 → 2010-02-04 |
| 10 | Install Printer Hardware | 2010-02-04 A |  |  | 0% → 50% |  | baseline start 2006-10-11 → 2010-02-04; baseline finish 2006-10-13 → 2010-02-08 |
| 11 | Request Test file from integrator |  |  |  |  |  | baseline start 2006-10-13 → 2010-02-08; baseline finish 2006-10-13 → 2010-02-08 |
| 12 | Test Printer Hardware with Test Files |  |  |  |  |  | baseline start 2006-10-16 → 2010-02-09; baseline finish 2006-10-16 → 2010-02-09 |
| 13 | **Review Work Completed / In Progress** |  |  |  |  |  | baseline start 2006-09-26 → 2010-01-20; baseline finish 2006-10-13 → 2010-02-08 |
| 14 | Verify Accuracy of Table Design and Entry |  |  |  |  |  | baseline start 2006-09-26 → 2010-01-20; baseline finish 2006-09-27 → 2010-01-21 |
| 15 | Identify all Table Data |  |  |  |  |  | baseline start 2006-09-28 → 2010-01-22; baseline finish 2006-10-04 → 2010-01-28 |
| 16 | Create and Enter all Table Data |  |  |  |  |  | baseline start 2006-10-05 → 2010-01-29; baseline finish 2006-10-10 → 2010-02-03 |
| 17 | Verify Accuracy of all Data |  |  |  |  |  | baseline start 2006-10-11 → 2010-02-04; baseline finish 2006-10-12 → 2010-02-05 |
| 18 | Identify Incomplete Table Data |  |  |  |  |  | baseline start 2006-10-13 → 2010-02-08; baseline finish 2006-10-13 → 2010-02-08 |
| 19 | **Determine Additional Requirements** |  |  |  | 99% → 43% |  | baseline start 2006-09-26 → 2010-01-20; baseline finish 2006-10-25 → 2010-02-18 |
| 20 | Finalize Additional session Scope |  |  |  |  |  | baseline start 2006-09-26 → 2010-01-20; baseline finish 2006-09-26 → 2010-01-20 |
| 21 | Communicate sessions to necessary attendees |  |  |  |  |  | baseline start 2006-09-27 → 2010-01-21; baseline finish 2006-09-27 → 2010-01-21 |
| 22 | Conduct Requirements Sessions |  |  |  |  |  | baseline start 2006-09-28 → 2010-01-22; baseline finish 2006-09-28 → 2010-01-22 |
| 23 | Document System Requirements |  | 2010-02-12 A → 2010-02-12 |  | 100% → 75% | none → 0d | baseline start 2006-09-29 → 2010-01-25; baseline finish 2006-10-19 → 2010-02-12 |
| 24 | Circulate initial requirements draft | 2010-01-28 A → 2010-01-28 | 2010-02-18 A → 2010-02-18 |  | 100% → 0% | none → 0d | baseline start 2006-10-04 → 2010-01-28; baseline finish 2006-10-25 → 2010-02-18 |
| 25 | Document Minutes from Sessions |  |  |  |  |  | baseline start 2006-10-25 → 2010-02-18; baseline finish 2006-10-25 → 2010-02-18 |
| 26 | **Testing** |  |  |  |  |  | baseline start 2006-09-26 → 2010-01-20; baseline finish 2006-09-29 → 2010-01-25 |
| 27 | Develop test plans |  |  |  |  |  | baseline start 2006-09-26 → 2010-01-20; baseline finish 2006-09-29 → 2010-01-25 |
| 28 | Develop integration test plan |  |  |  |  |  | baseline start 2006-09-26 → 2010-01-20; baseline finish 2006-09-29 → 2010-01-25 |
| 29 | Unit Testing |  |  |  |  |  | baseline start 2006-09-26 → 2010-01-20; baseline finish 2006-09-26 → 2010-01-20 |
| 30 | Unit testing complete |  |  |  |  |  | baseline start 2006-09-26 → 2010-01-20; baseline finish 2006-09-26 → 2010-01-20 |
| 31 | **Rollout** |  |  |  |  |  | baseline start 2006-09-26 → 2010-01-20; baseline finish 2006-09-28 → 2010-01-22 |
| 32 | Develop rollout strategy |  |  |  |  |  | baseline start 2006-09-26 → 2010-01-20; baseline finish 2006-09-26 → 2010-01-20 |
| 33 | Develop rollout project plan methodology |  |  |  |  |  | baseline start 2006-09-27 → 2010-01-21; baseline finish 2006-09-27 → 2010-01-21 |
| 34 | Distribute software |  |  |  |  |  | baseline start 2006-09-28 → 2010-01-22; baseline finish 2006-09-28 → 2010-01-22 |
| 35 | Rollout complete |  |  |  |  |  | baseline start 2006-09-28 → 2010-01-22; baseline finish 2006-09-28 → 2010-01-22 |
