# NewOffice-IT-Mphasis

How a schedule from MS Project changed from version to version. A marks actual dates.

## Version 1 (data date 2012-11-05, saved 2012-10-17, file Mphasis-NewOffice-IT.mpp)

| ID | WBS | Task | Duration | Start | Finish | Predecessors | Complete | Total float | Constraint |
| --- | --- | --- | --- | --- | --- | --- | --- | --- | --- |
| 1 | 1 | **NewOffice-IT-Mphasis-Project** | 40d | 2012-10-22 A | 2012-12-14 |  | 21% | 0d |  |
| 2 | 1.1 | **Phase1 (Planning Phase)** | 14.62d | 2012-10-22 A | 2012-11-09 |  | 61% | 25.38d |  |
| 3 | 1.1.1 | **Floor Design** | 8.62d | 2012-10-22 A | 2012-11-01 A |  | 100% |  |  |
| 4 | 1.1.1.1 | **Furniture Layout Design** | 4d | 2012-10-22 A | 2012-10-25 A |  | 100% |  |  |
| 5 |  | Identify # of WS required | 2d | 2012-10-22 A | 2012-10-23 A |  | 100% |  |  |
| 6 |  | Identify WS size | 2d | 2012-10-24 A | 2012-10-25 A | 5 | 100% |  |  |
| 7 | 1.1.1.2 | **Data Raceway** | 4.12d | 2012-10-26 A | 2012-11-01 A |  | 100% |  |  |
| 8 |  | Identify raceway type | 2d | 2012-10-26 A | 2012-10-29 A | 4 | 100% |  |  |
| 9 |  | Identify path | 2.12d | 2012-10-30 A | 2012-11-01 A | 8 | 100% |  |  |
| 10 | 1.1.1.3 | **Hubroom Layout** | 4.62d | 2012-10-26 A | 2012-11-01 A |  | 100% |  |  |
| 11 |  | Calculate # of rack required | 2d | 2012-10-26 A | 2012-10-29 A | 4 | 100% |  |  |
| 12 |  | Calculate the hub room size | 2.62d | 2012-10-30 A | 2012-11-01 A | 11 | 100% |  |  |
| 13 | 1.1.2 | **Network Design** | 10.62d | 2012-10-26 | 2012-11-09 |  |  | 6d |  |
| 14 | 1.1.2.1 | **Cabling Design** | 6d | 2012-11-01 | 2012-11-09 |  |  | 25.38d |  |
| 15 |  | Prepare BOM | 2d | 2012-11-01 | 2012-11-05 | 7, 10 |  | 25.38d |  |
| 16 |  | Take BOM approval | 2d | 2012-11-05 | 2012-11-09 | 15 |  | 25.38d |  |
| 17 | 1.1.2.2 | **LAN Design** | 4d | 2012-10-26 | 2012-10-31 |  |  | 6d |  |
| 18 |  | Prepare BOM of LAN Devices | 2d | 2012-10-26 | 2012-10-29 | 4 |  | 6d |  |
| 19 |  | Take approval of BOM of LAN devices | 2d | 2012-10-30 | 2012-10-31 | 18 |  | 6d |  |
| 20 |  | Floor Design Complete | 0d | 2012-10-31 | 2012-10-31 | 19 |  | 6d |  |
| 21 | 1.2 | **Phase2 (Procurement)** | 10d | 2012-11-01 | 2012-11-14 |  |  | 6d |  |
| 22 | 1.2.1 | **Quote** | 2d | 2012-11-01 | 2012-11-02 |  |  | 6d |  |
| 23 |  | Passive Cabling Quote | 2d | 2012-11-01 | 2012-11-02 | 20 |  | 6d | start no earlier than 2012-10-31 |
| 24 |  | Active Device Quote | 2d | 2012-11-01 | 2012-11-02 | 20 |  | 8d |  |
| 25 | 1.2.2 | **Vendor Finalization** | 2d | 2012-11-05 | 2012-11-06 |  |  | 6d |  |
| 26 |  | Passive Cabling VF | 2d | 2012-11-05 | 2012-11-06 | 23 |  | 6d | start no earlier than 2012-11-05 |
| 27 |  | Active Device VF | 2d | 2012-11-05 | 2012-11-06 | 24 |  | 8d |  |
| 28 | 1.2.3 | **Order Material** | 4d | 2012-11-07 | 2012-11-12 |  |  | 6d |  |
| 29 | 1.2.3.1 | **Passive Cabling Order** | 4d | 2012-11-07 | 2012-11-12 |  |  | 6d |  |
| 30 |  | Raise procurment request of PD | 2d | 2012-11-07 | 2012-11-08 | 26 |  | 6d |  |
| 31 |  | Relase PO of PD | 2d | 2012-11-09 | 2012-11-12 | 30 |  | 6d |  |
| 32 | 1.2.3.2 | **Active Device Order** | 4d | 2012-11-07 | 2012-11-12 |  |  | 8d |  |
| 33 |  | Raise procurment request of AD | 2d | 2012-11-07 | 2012-11-08 | 27 |  | 8d |  |
| 34 |  | Raise purpose order of AD | 2d | 2012-11-09 | 2012-11-12 | 33 |  | 8d | start no earlier than 2012-11-09 |
| 35 | 1.2.4 | **Delivery Material** | 2d | 2012-11-13 | 2012-11-14 |  |  | 6d |  |
| 36 |  | Passive Cabling Delivery of AD | 2d | 2012-11-13 | 2012-11-14 | 31 |  | 6d | start no earlier than 2012-11-13 |
| 37 |  | Active Device Delivery of AD | 2d | 2012-11-13 | 2012-11-14 | 34 |  | 8d |  |
| 38 |  | Procurement complete | 0d | 2012-11-14 | 2012-11-14 | 37 |  | 22d |  |
| 39 | 1.3 | **Phase3 (Implementation)** | 6.8d | 2012-11-15 A | 2012-11-23 |  |  | 5.2d |  |
| 40 |  | Cabling Setup | 2d | 2012-11-15 A | 2012-11-16 | 36 |  | 6d |  |
| 41 |  | LAN Setup | 2d | 2012-11-19 A | 2012-11-21 | 37, 40 |  | 5.2d |  |
| 42 |  | Testing | 2d | 2012-11-21 | 2012-11-23 | 41 |  | 5.2d |  |
| 43 |  | Implementation Complete | 0d | 2012-11-23 | 2012-11-23 | 42 |  | 5.2d |  |
| 44 | 1.4 | **Phase4** | 4d | 2012-11-23 | 2012-11-29 |  |  | 11.2d |  |
| 45 |  | UAT | 2d | 2012-11-23 | 2012-11-27 | 43 |  | 11.2d | start no earlier than 2012-11-23 |
| 46 |  | Troubleshoot | 2d | 2012-11-27 | 2012-11-29 | 45 |  | 11.2d |  |
| 47 | 1.5 | **Phase5 (Develop Ticketing System)** | 15.2d | 2012-11-23 A | 2012-12-14 |  | 12% | 0d |  |
| 48 | 1.5.1 | **Develop Complaint Entry Screen** | 6d | 2012-11-23 | 2012-12-03 |  |  | 5.2d |  |
| 49 |  | Develop DB for Complaint Screen | 3d | 2012-11-23 | 2012-11-28 | 39 |  | 5.2d |  |
| 50 |  | Develop UI for Complaint Screen | 3d | 2012-11-28 | 2012-12-03 | 49 |  | 5.2d |  |
| 51 | 1.5.2 | **Develop Alerts Workflow** | 4d | 2012-12-03 | 2012-12-07 |  |  | 5.2d |  |
| 52 |  | Design Workflow | 2d | 2012-12-03 | 2012-12-05 | 50 |  | 5.2d |  |
| 53 |  | Implement Workflow | 2d | 2012-12-05 | 2012-12-07 | 52 |  | 5.2d |  |
| 54 | 1.5.3 | **Devleop Severity Definition Screen** | 4d | 2012-12-03 | 2012-12-07 |  |  | 5.2d |  |
| 55 |  | Develop DB for Severity | 1d | 2012-12-03 | 2012-12-04 | 50 |  | 8.2d |  |
| 56 |  | Implement Severity Screen | 2d | 2012-12-05 | 2012-12-07 | 52 |  | 5.2d | start no earlier than 2012-12-05 |
| 57 |  | FT of System | 1.95d | 2012-12-07 A | 2012-12-11 A | 54 | 100% |  |  |
| 58 |  | UAT | 3d | 2012-12-11 | 2012-12-14 | 57 |  | 0.25d |  |
| 59 |  | Production Golive | 0.25d | 2012-12-14 A | 2012-12-14 A | 58 | 100% |  |  |
| 60 | 1.6 | **Project Management** | 29.12d | 2012-10-22 | 2012-11-30 |  |  | 10.88d |  |
| 61 | 1.6.1 | **Status Meeting with Management** | 25.12d | 2012-10-22 | 2012-11-26 |  |  | 14.88d |  |
| 62 |  | Status Meeting with Management 1 | 1h | 2012-10-22 | 2012-10-22 |  |  | 39.88d | start no earlier than 2012-10-22 |
| 63 |  | Status Meeting with Management 2 | 1h | 2012-11-26 | 2012-11-26 |  |  | 14.88d | start no earlier than 2012-11-26 |
| 64 | 1.6.2 | **Review Project Plan & Risks** | 25.12d | 2012-10-26 | 2012-11-30 |  |  | 10.88d |  |
| 65 |  | Review Project Plan & Risks 1 | 1h | 2012-10-26 | 2012-10-26 |  |  | 35.88d | start no earlier than 2012-10-26 |
| 66 |  | Review Project Plan & Risks 2 | 1h | 2012-11-02 | 2012-11-02 |  |  | 30.88d | start no earlier than 2012-11-02 |
| 67 |  | Review Project Plan & Risks 3 | 1h | 2012-11-09 | 2012-11-09 |  |  | 25.88d | start no earlier than 2012-11-09 |
| 68 |  | Review Project Plan & Risks 4 | 1h | 2012-11-16 | 2012-11-16 |  |  | 20.88d | start no earlier than 2012-11-16 |
| 69 |  | Review Project Plan & Risks 5 | 1h | 2012-11-23 | 2012-11-23 |  |  | 15.88d | start no earlier than 2012-11-23 |
| 70 |  | Review Project Plan & Risks 6 | 1h | 2012-11-30 | 2012-11-30 |  |  | 10.88d | start no earlier than 2012-11-30 |

## Version 2 (data date 2014-05-28, saved 2014-05-28, file JP Morgan-NewOffice-IT.mpp)

Last finish 2012-12-14 → 2014-07-17 (+580d). Complete tasks 8 → 0.

Added:

| ID | Task | Duration | Start | Finish |
| --- | --- | --- | --- | --- |
| 46 | Testing Complete | 1d? | 2014-05-27 | 2014-05-27 |
| 60 | Handover Complete | 1d? | 2014-05-27 | 2014-05-27 |

Removed: 1 NewOffice-IT-Mphasis-Project; 60 Project Management; 61 Status Meeting with Management; 62 Status Meeting with Management 1; 63 Status Meeting with Management 2; 64 Review Project Plan & Risks; 65 Review Project Plan & Risks 1; 66 Review Project Plan & Risks 2; 67 Review Project Plan & Risks 3; 68 Review Project Plan & Risks 4; 69 Review Project Plan & Risks 5; 70 Review Project Plan & Risks 6

Changed:

| ID | Task | Start | Finish | Duration | Complete | Total float | Predecessors | Other |
| --- | --- | --- | --- | --- | --- | --- | --- | --- |
| 1 | **Phase1 (Designing)** | 2012-10-22 A → 2014-05-27 (+582d) | 2012-11-09 → 2014-06-16 (+584d) |  | 61% → 0% | 25.38d → 0d |  | was named Phase1 (Planning Phase); baseline start 2012-10-22 → none; baseline finish 2012-11-06 → none |
| 2 | **Floor Design** | 2012-10-22 A → 2014-05-27 (+582d) | 2012-11-01 A → 2014-06-06 (+582d) |  | 100% → 0% | none → 0d |  | baseline start 2012-10-22 → none; baseline finish 2012-10-31 → none |
| 3 | **Furniture Layout Design** | 2012-10-22 A → 2014-05-27 (+582d) | 2012-10-25 A → 2014-05-30 (+582d) |  | 100% → 0% | none → 0d |  | baseline start 2012-10-22 → none; baseline finish 2012-10-25 → none |
| 4 | Identify # of WS required | 2012-10-22 A → 2014-05-27 (+582d) | 2012-10-23 A → 2014-05-28 (+582d) |  | 100% → 0% | none → 0d |  | baseline start 2012-10-22 → none; baseline finish 2012-10-23 → none |
| 5 | Identify WS size | 2012-10-24 A → 2014-05-29 (+582d) | 2012-10-25 A → 2014-05-30 (+582d) |  | 100% → 0% | none → 0d |  | baseline start 2012-10-24 → none; baseline finish 2012-10-25 → none |
| 6 | **Data Raceway** | 2012-10-26 A → 2014-06-02 (+584d) | 2012-11-01 A → 2014-06-06 (+582d) |  | 100% → 0% | none → 23.07d |  | baseline start 2012-10-26 → none; baseline finish 2012-10-31 → none |
| 7 | Identify raceway type | 2012-10-26 A → 2014-06-02 (+584d) | 2012-10-29 A → 2014-06-03 (+582d) |  | 100% → 0% | none → 23.07d |  | resources Ravi → Debasree; baseline start 2012-10-26 → none; baseline finish 2012-10-29 → none |
| 8 | Identify path | 2012-10-30 A → 2014-06-04 (+582d) | 2012-11-01 A → 2014-06-06 (+582d) |  | 100% → 0% | none → 23.07d |  | resources Ravi → Debasree; baseline start 2012-10-30 → none; baseline finish 2012-10-31 → none |
| 9 | **Hubroom Layout** | 2012-10-26 A → 2014-06-02 (+584d) | 2012-11-01 A → 2014-06-06 (+582d) |  | 100% → 0% | none → 22.57d |  | baseline start 2012-10-26 → none; baseline finish 2012-10-31 → none |
| 10 | Calculate # of rack required | 2012-10-26 A → 2014-06-02 (+584d) | 2012-10-29 A → 2014-06-03 (+582d) |  | 100% → 0% | none → 22.57d |  | resources Sharan → Aditya; baseline start 2012-10-26 → none; baseline finish 2012-10-29 → none |
| 11 | Calculate the hub room size | 2012-10-30 A → 2014-06-04 (+582d) | 2012-11-01 A → 2014-06-06 (+582d) |  | 100% → 0% | none → 22.57d |  | resources Sharan → Aditya; baseline start 2012-10-30 → none; baseline finish 2012-10-31 → none |
| 12 | **Network Design** | 2012-10-26 → 2014-06-02 (+584d) | 2012-11-09 → 2014-06-16 (+584d) |  |  | 6d → 0d |  | baseline start 2012-10-26 → none; baseline finish 2012-11-06 → none |
| 13 | **Cabling Design** | 2012-11-01 → 2014-06-06 (+582d) | 2012-11-09 → 2014-06-16 (+584d) |  |  | 25.38d → 22.57d |  | baseline start 2012-11-01 → none; baseline finish 2012-11-06 → none |
| 14 | Prepare BOM | 2012-11-01 → 2014-06-06 (+582d) | 2012-11-05 → 2014-06-10 (+582d) |  |  | 25.38d → 22.57d |  | resources Sandhya → Rahul; baseline start 2012-11-01 → none; baseline finish 2012-11-02 → none |
| 15 | Take BOM approval | 2012-11-05 → 2014-06-10 (+582d) | 2012-11-09 → 2014-06-16 (+584d) |  |  | 25.38d → 22.57d |  | resources Sandhya → Rahul; baseline start 2012-11-05 → none; baseline finish 2012-11-06 → none |
| 16 | **LAN Design** | 2012-10-26 → 2014-06-02 (+584d) | 2012-10-31 → 2014-06-05 (+582d) |  |  | 6d → 0d |  | baseline start 2012-10-26 → none; baseline finish 2012-10-31 → none |
| 17 | Prepare BOM of LAN Devices | 2012-10-26 → 2014-06-02 (+584d) | 2012-10-29 → 2014-06-03 (+582d) |  |  | 6d → 0d |  | resources Hoysala → Tina; baseline start 2012-10-26 → none; baseline finish 2012-10-29 → none |
| 18 | Take approval of BOM of LAN devices | 2012-10-30 → 2014-06-04 (+582d) | 2012-10-31 → 2014-06-05 (+582d) |  |  | 6d → 0d |  | resources Hoysala → Tina; baseline start 2012-10-30 → none; baseline finish 2012-10-31 → none |
| 19 | Floor Design Complete | 2012-10-31 → 2014-06-05 (+582d) | 2012-10-31 → 2014-06-05 (+582d) |  |  | 6d → 0d |  | baseline start 2012-10-31 → none; baseline finish 2012-10-31 → none |
| 20 | **Phase2 (Procurement)** | 2012-11-01 → 2014-06-06 (+582d) | 2012-11-14 → 2014-06-19 (+582d) |  |  | 6d → 0d |  | baseline start 2012-11-01 → none; baseline finish 2012-11-14 → none |
| 21 | **Quote** | 2012-11-01 → 2014-06-06 (+582d) | 2012-11-02 → 2014-06-09 (+584d) |  |  | 6d → 0d |  | baseline start 2012-11-01 → none; baseline finish 2012-11-02 → none |
| 22 | Passive Cabling Quote | 2012-11-01 → 2014-06-06 (+582d) | 2012-11-02 → 2014-06-09 (+584d) |  |  | 6d → 0d |  | constraint start no earlier than 2012-10-31 → none; resources V Srinivas → Richard; baseline start 2012-11-01 → none; baseline finish 2012-11-02 → none |
| 23 | Active Device Quote | 2012-11-01 → 2014-06-06 (+582d) | 2012-11-02 → 2014-06-09 (+584d) |  |  | 8d → 2d |  | baseline start 2012-11-01 → none; baseline finish 2012-11-02 → none |
| 24 | **Vendor Finalization** | 2012-11-05 → 2014-06-10 (+582d) | 2012-11-06 → 2014-06-11 (+582d) |  |  | 6d → 0d |  | baseline start 2012-11-05 → none; baseline finish 2012-11-06 → none |
| 25 | Passive Cabling VF | 2012-11-05 → 2014-06-10 (+582d) | 2012-11-06 → 2014-06-11 (+582d) |  |  | 6d → 0d |  | constraint start no earlier than 2012-11-05 → none; resources Ravi → Debasree; baseline start 2012-11-05 → none; baseline finish 2012-11-06 → none |
| 26 | Active Device VF | 2012-11-05 → 2014-06-10 (+582d) | 2012-11-06 → 2014-06-11 (+582d) |  |  | 8d → 2d |  | baseline start 2012-11-05 → none; baseline finish 2012-11-06 → none |
| 27 | **Order Material** | 2012-11-07 → 2014-06-12 (+582d) | 2012-11-12 → 2014-06-17 (+582d) |  |  | 6d → 0d |  | baseline start 2012-11-07 → none; baseline finish 2012-11-12 → none |
| 28 | **Passive Cabling Order** | 2012-11-07 → 2014-06-12 (+582d) | 2012-11-12 → 2014-06-17 (+582d) |  |  | 6d → 0d |  | baseline start 2012-11-07 → none; baseline finish 2012-11-12 → none |
| 29 | Raise procurment request of PD | 2012-11-07 → 2014-06-12 (+582d) | 2012-11-08 → 2014-06-13 (+582d) |  |  | 6d → 0d |  | resources Sandhya → Rahul; baseline start 2012-11-07 → none; baseline finish 2012-11-08 → none |
| 30 | Relase PO of PD | 2012-11-09 → 2014-06-16 (+584d) | 2012-11-12 → 2014-06-17 (+582d) |  |  | 6d → 0d |  | baseline start 2012-11-09 → none; baseline finish 2012-11-12 → none |
| 31 | **Active Device Order** | 2012-11-07 → 2014-06-12 (+582d) | 2012-11-12 → 2014-06-17 (+582d) |  |  | 8d → 2d |  | baseline start 2012-11-07 → none; baseline finish 2012-11-12 → none |
| 32 | Raise procurment request of AD | 2012-11-07 → 2014-06-12 (+582d) | 2012-11-08 → 2014-06-13 (+582d) |  |  | 8d → 2d |  | resources Hoysala → Tina; baseline start 2012-11-07 → none; baseline finish 2012-11-08 → none |
| 33 | Raise purpose order of AD | 2012-11-09 → 2014-06-16 (+584d) | 2012-11-12 → 2014-06-17 (+582d) |  |  | 8d → 2d |  | constraint start no earlier than 2012-11-09 → none; resources Ravi → Debasree; baseline start 2012-11-09 → none; baseline finish 2012-11-12 → none |
| 34 | **Delivery Material** | 2012-11-13 → 2014-06-18 (+582d) | 2012-11-14 → 2014-06-19 (+582d) |  |  | 6d → 0d |  | baseline start 2012-11-13 → none; baseline finish 2012-11-14 → none |
| 35 | Passive Cabling Delivery of AD | 2012-11-13 → 2014-06-18 (+582d) | 2012-11-14 → 2014-06-19 (+582d) |  |  | 6d → 0d |  | constraint start no earlier than 2012-11-13 → none; resources Tyco [1 Nos]; Sandhya; Material Movment Cost [0.1%] → Tyco [1 Nos]; Rahul; Material Movment Cost [0.1%]; baseline start 2012-11-13 → none; baseline finish 2012-11-14 → none |
| 36 | Active Device Delivery of AD | 2012-11-13 → 2014-06-18 (+582d) | 2012-11-14 → 2014-06-19 (+582d) |  |  | 8d → 2d |  | baseline start 2012-11-13 → none; baseline finish 2012-11-14 → none |
| 37 | Procurement complete | 2012-11-14 → 2014-06-19 (+582d) | 2012-11-14 → 2014-06-19 (+582d) |  |  | 22d → 19.2d |  | baseline start 2012-11-14 → none; baseline finish 2012-11-14 → none |
| 38 | **Phase3 (Implementation)** | 2012-11-15 A → 2014-05-27 (+558d) | 2012-11-23 → 2014-06-25 (+579d) | 6.8d → 22d |  | 5.2d → 0d |  | baseline start 2012-11-15 → none; baseline finish 2012-11-22 → none |
| 39 | Cabling Setup | 2012-11-15 A → 2014-06-20 (+582d) | 2012-11-16 → 2014-06-23 (+584d) |  |  | 6d → 0d |  | resources Cabling Vendor [0.1%]; Ravi; Cables [100 Meters]; Installation Charges [0.1%] → Cabling Vendor [0.1%]; Debasree; Cables [100 Meters]; Installation Charges [0.1%]; baseline start 2012-11-15 → none; baseline finish 2012-11-16 → none |
| 40 | LAN Setup | 2012-11-19 A → 2014-06-24 (+582d) | 2012-11-21 → 2014-06-25 (+581d) |  |  | 5.2d → 0d |  | baseline start 2012-11-19 → none; baseline finish 2012-11-20 → none |
| 41 | Testing | 2012-11-21 → 2014-05-27 (+552d) | 2012-11-23 → 2014-05-28 (+551d) |  |  | 5.2d → 20d | 40 → none | resources Rajnikant; Srivinas; Sukumar; V Srinivas → Aruna; Sonal; Somaiah; Richard; baseline start 2012-11-21 → none; baseline finish 2012-11-22 → none |
| 42 | Implementation Complete | 2012-11-23 → 2014-05-28 (+551d) | 2012-11-23 → 2014-05-28 (+551d) |  |  | 5.2d → 20d |  | baseline start 2012-11-22 → none; baseline finish 2012-11-22 → none |
| 43 | **Phase4 (Final Testing)** | 2012-11-23 → 2014-05-27 (+550d) | 2012-11-29 → 2014-06-03 (+551d) | 4d → 6d? |  | 11.2d → 31.2d |  | was named Phase4; baseline start 2012-11-23 → none; baseline finish 2012-11-28 → none |
| 44 | UAT | 2012-11-23 → 2014-05-29 (+552d) | 2012-11-27 → 2014-05-30 (+549d) |  |  | 11.2d → 31.2d |  | constraint start no earlier than 2012-11-23 → none; resources Rajnikant; Karthik; Sukumar; V Srinivas → Aruna; Karthik; Somaiah; Richard; baseline start 2012-11-23 → none; baseline finish 2012-11-26 → none |
| 45 | Troubleshoot | 2012-11-27 → 2014-06-02 (+552d) | 2012-11-29 → 2014-06-03 (+551d) |  |  | 11.2d → 31.2d |  | resources Ravi; Network Engineer → Debasree; Network Engineer; baseline start 2012-11-27 → none; baseline finish 2012-11-28 → none |
| 47 | **Phase5 (Develop Ticketing System)** | 2012-11-23 A → 2014-05-27 (+550d) | 2012-12-14 → 2014-07-17 (+580d) | 15.2d → 37.2d? | 12% → 0% |  |  | baseline start 2012-11-23 → none; baseline finish 2012-12-14 → none |
| 48 | **Develop Complaint Entry Screen** | 2012-11-23 → 2014-06-26 (+580d) | 2012-12-03 → 2014-07-03 (+577d) |  |  | 5.2d → 0d |  | baseline start 2012-11-23 → none; baseline finish 2012-11-30 → none |
| 49 | Develop DB for Complaint Screen | 2012-11-23 → 2014-06-26 (+580d) | 2012-11-28 → 2014-06-30 (+579d) |  |  | 5.2d → 0d |  | resources Srivinas → Sonal; baseline start 2012-11-23 → none; baseline finish 2012-11-27 → none |
| 50 | Develop UI for Complaint Screen | 2012-11-28 → 2014-07-01 (+580d) | 2012-12-03 → 2014-07-03 (+577d) |  |  | 5.2d → 0d |  | resources Rajnikant → Aruna; baseline start 2012-11-28 → none; baseline finish 2012-11-30 → none |
| 51 | **Develop Alerts Workflow** | 2012-12-03 → 2014-07-04 (+578d) | 2012-12-07 → 2014-07-09 (+579d) |  |  | 5.2d → 0d |  | baseline start 2012-12-03 → none; baseline finish 2012-12-06 → none |
| 52 | Design Workflow | 2012-12-03 → 2014-07-04 (+578d) | 2012-12-05 → 2014-07-07 (+579d) |  |  | 5.2d → 0d |  | resources V Srinivas → Richard; baseline start 2012-12-03 → none; baseline finish 2012-12-04 → none |
| 53 | Implement Workflow | 2012-12-05 → 2014-07-08 (+580d) | 2012-12-07 → 2014-07-09 (+579d) |  |  |  |  | resources Radhakrisna → Sindhu; baseline start 2012-12-05 → none; baseline finish 2012-12-06 → none |
| 54 | **Devleop Severity Definition Screen** | 2012-12-03 → 2014-07-04 (+578d) | 2012-12-07 → 2014-07-09 (+579d) |  |  | 5.2d → 0d |  | baseline start 2012-12-03 → none; baseline finish 2012-12-06 → none |
| 55 | Develop DB for Severity | 2012-12-03 → 2014-07-04 (+578d) | 2012-12-04 → 2014-07-04 (+577d) |  |  | 8.2d → 3d |  | resources Sukumar → Somaiah; baseline start 2012-12-03 → none; baseline finish 2012-12-03 → none |
| 56 | Implement Severity Screen | 2012-12-05 → 2014-07-08 (+580d) | 2012-12-07 → 2014-07-09 (+579d) |  |  | 5.2d → 0d |  | constraint start no earlier than 2012-12-05 → none; resources Rajnikant → Aruna; baseline start 2012-12-05 → none; baseline finish 2012-12-06 → none |
| 57 | FT of System | 2012-12-07 A → 2014-07-10 (+580d) | 2012-12-11 A → 2014-07-11 (+577d) |  | 100% → 0% | none → 0d |  | resources Srivinas → Sonal; baseline start 2012-12-07 → none; baseline finish 2012-12-10 → none |
| 58 | UAT | 2012-12-11 → 2014-07-11 (+577d) | 2012-12-14 → 2014-07-16 (+579d) |  |  | 0.25d → 0d |  | baseline start 2012-12-11 → none; baseline finish 2012-12-13 → none |
| 59 | Production Golive | 2012-12-14 A → 2014-07-16 (+579d) | 2012-12-14 A → 2014-07-17 (+580d) |  | 100% → 0% | none → 0d |  | resources Rajnikant → Aruna; baseline start 2012-12-14 → none; baseline finish 2012-12-14 → none |
